Schedule from GanttProject, 2024-09-02 to 2024-12-27.

## Calendars

- Project calendar: Mon-Fri working; Sat-Sun off.

## Resources

| Resource |
| --- |
| Manager-QA |
| Test TL |
| Web TL |
| Back dev 1 |
| Back dev 2 |
| Back dev 3 |
| Architect+Devops |
| Front dev 1 |
| Front dev 2 |
| Front dev 3 |
| Sys dev 1 |
| Sys dev 2 |
| Sys dev 3 |
| Sys dev 4 |
| Test Analyst 1 |
| Test Analyst 2 |

## Schedule

| ID | Task | Type | Duration | Start | Finish | Predecessors | Resources | Cost |
| --- | --- | --- | --- | --- | --- | --- | --- | --- |
| 1 | Общее управление |  | 85d | 2024-09-02 | 2024-12-27 |  | Manager-QA | 60 |
| 2 | Web: управление |  | 75d | 2024-09-16 | 2024-12-27 |  | Web TL | 40 |
| 3 | Тесты: управление |  | 75d | 2024-09-16 | 2024-12-27 |  | Test TL | 40 |
| 4 | Фаза 0: подготовка | milestone | 0d | 2024-09-13 | 2024-09-13 |  |  |  |
| 5 | Фронт: инструкции |  | 5d | 2024-09-02 | 2024-09-06 |  | Manager-QA | 3 |
| 6 | Фронт: заготовка |  | 5d | 2024-09-09 | 2024-09-13 |  | Manager-QA | 6 |
| 7 | Бэк: инструкции |  | 5d | 2024-09-02 | 2024-09-06 |  | Web TL | 3 |
| 8 | Бэк: заготовка |  | 5d | 2024-09-09 | 2024-09-13 |  | Web TL | 4 |
| 9 | Схема данных |  | 5d | 2024-09-02 | 2024-09-06 |  | Architect+Devops | 6 |
| 10 | Описание API |  | 5d | 2024-09-09 | 2024-09-13 |  | Architect+Devops | 6 |
| 11 | Exec: демо |  | 5d | 2024-09-02 | 2024-09-06 |  | Test Analyst 1 | 4 |
| 12 | Exec: инструкции |  | 5d | 2024-09-09 | 2024-09-13 |  | Test Analyst 2 | 3 |
| 13 | Тесты: заготовка |  | 10d | 2024-09-02 | 2024-09-13 |  | Test TL | 6 |
| 14 | Фаза 1 | milestone | 0d | 2024-10-25 | 2024-10-25 |  |  |  |
| 15 | Тесты: доанализ требований |  | 25d | 2024-09-16 | 2024-10-18 |  | Test Analyst 1 | 10 |
| 16 | Web: доанализ требований |  | 25d | 2024-09-16 | 2024-10-18 |  | Test Analyst 2 | 10 |
| 17 | Тесты: обучение |  | 5d | 2024-09-16 | 2024-09-20 |  | Sys dev 3; Sys dev 4 | 4 |
| 18 | Тесты исполняемого файла |  | 5d | 2024-09-23 | 2024-09-27 | 17 | Sys dev 3 | 2 |
| 19 | Тесты модуля конфигурации |  | 5d | 2024-09-23 | 2024-09-27 | 17 | Sys dev 4 | 2 |
| 20 | Тесты cli |  | 5d | 2024-09-30 | 2024-10-04 |  | Sys dev 3 | 2 |
| 21 | Тесты логгера |  | 5d | 2024-09-30 | 2024-10-04 |  | Sys dev 4 | 2 |
| 22 | Тесты IPC |  | 5d | 2024-10-07 | 2024-10-11 |  | Sys dev 3 | 2 |
| 23 | Тесты корректности кэша |  | 5d | 2024-10-07 | 2024-10-11 |  | Sys dev 4 | 2 |
| 24 | Exec: обучение |  | 5d | 2024-09-16 | 2024-09-20 |  | Sys dev 1; Sys dev 2 | 4 |
| 25 | Exec: запуск бинарника |  | 5d | 2024-09-23 | 2024-09-27 | 24 | Sys dev 1 | 4 |
| 26 | Exec: получение stdin |  | 5d | 2024-09-30 | 2024-10-04 | 25 | Sys dev 1 | 2 |
| 27 | Exec: получение сокета |  | 5d | 2024-09-30 | 2024-10-04 | 25 | Sys dev 2 | 2 |
| 28 | Exec: получение вывода |  | 5d | 2024-10-07 | 2024-10-11 | 25 | Sys dev 1 | 2 |
| 29 | Exec: получение статистик /proc |  | 5d | 2024-10-07 | 2024-10-11 | 25 | Sys dev 2 | 2 |
| 30 | Фронт: обучение |  | 5d | 2024-09-16 | 2024-09-20 |  | Front dev 1; Front dev 2; Front dev 3 | 6 |
| 31 | Авторизация пользователя |  | 5d | 2024-09-16 | 2024-09-20 |  | Back dev 1 | 4 |
| 32 | Изменение пароля |  | 5d | 2024-09-23 | 2024-09-27 | 31 | Back dev 1 | 4 |
| 33 | Получение групп для пользователя.. |  | 5d | 2024-09-30 | 2024-10-04 |  | Back dev 1 | 2 |
| 34 | Создание редактирование группы |  | 5d | 2024-10-07 | 2024-10-11 | 33 | Back dev 1 | 2 |
| 35 | Интеграция: пользователи |  | 5d | 2024-10-14 | 2024-10-18 | 31, 32, 33, 34, 36, 37, 38, 39, 40, 41, 42 | Back dev 1; Front dev 1 | 8 |
| 36 | Восстановление пароля |  | 5d | 2024-09-23 | 2024-09-27 |  | Front dev 1 | 1 |
| 37 | Welcome страница |  | 5d | 2024-09-23 | 2024-09-27 |  | Front dev 1 | 1 |
| 38 | Страница входа |  | 5d | 2024-09-23 | 2024-09-27 |  | Front dev 1 | 1 |
| 39 | Навигация в шапке |  | 5d | 2024-09-30 | 2024-10-04 |  | Front dev 1 | 2 |
| 40 | Личный кабинет |  | 5d | 2024-09-30 | 2024-10-04 | 38 | Front dev 1 | 2 |
| 41 | Создание редактирование группы |  | 5d | 2024-10-07 | 2024-10-11 |  | Front dev 1 | 2 |
| 42 | Экран групп |  | 5d | 2024-10-07 | 2024-10-11 |  | Front dev 1 | 2 |
| 43 | Фаза 2 | milestone | 0d | 2024-11-29 | 2024-11-29 |  |  |  |
| 44 | Тесты: доанализ требований 2 |  | 20d | 2024-10-28 | 2024-11-22 |  | Test Analyst 1 | 8 |
| 45 | Web: доанализ требований 2 |  | 20d | 2024-10-28 | 2024-11-22 |  | Test Analyst 2 | 8 |
| 46 | Тесты многозадачности |  | 5d | 2024-10-28 | 2024-11-01 |  | Sys dev 3 | 2 |
| 47 | Тесты сети |  | 10d | 2024-10-28 | 2024-11-08 |  | Sys dev 4 | 2 |
| 48 | Тесты кэша |  | 5d | 2024-11-11 | 2024-11-15 |  | Sys dev 3 | 2 |
| 49 | Нагрузочные тесты |  | 10d | 2024-11-04 | 2024-11-15 |  | Sys dev 4 | 6 |
| 50 | Exec: жесткие ограничения cgroup 1 |  | 15d | 2024-10-28 | 2024-11-15 |  | Sys dev 1 | 6 |
| 51 | Exec: жесткие ограничения cgroup 2 |  | 15d | 2024-10-28 | 2024-11-15 |  | Sys dev 2 | 6 |
| 52 | Фаза 3 | milestone | 0d | 2024-12-27 | 2024-12-27 |  |  |  |
| 53 | Тесты: доанализ требований 3 |  | 20d | 2024-12-02 | 2024-12-27 |  | Test Analyst 1 | 8 |
| 54 | Web: доанализ требований 3 |  | 20d | 2024-12-02 | 2024-12-27 |  | Test Analyst 2 | 8 |
| 55 | Тесты под valgrind и санитайзерами |  | 10d | 2024-12-02 | 2024-12-13 |  | Sys dev 3 | 6 |
| 56 | Тесты с ограниченными ресурсами |  | 10d | 2024-12-02 | 2024-12-13 |  | Sys dev 4 | 6 |
| 57 | Exec: ограничение fs, mount |  | 10d | 2024-12-02 | 2024-12-13 |  | Sys dev 1 | 6 |
| 58 | Exec: ограничение network workspace |  | 10d | 2024-12-02 | 2024-12-13 |  | Sys dev 2 | 6 |
